# ReservaTuFuturo

Schedule from MS Project, 2024-10-02 to 2024-12-12, status date 2024-11-06, costs in €, A marks actual dates.

## Calendars

- Estándar: Mon-Fri 09:00-13:00, 15:00-19:00; Sat-Sun off.
- Calendario-Sevilla: Mon-Fri 09:00-13:00, 15:00-19:00; Sat-Sun off. Exceptions (off unless hours are given): 2024-11-01 (Festividad de todos los santos), 2024-12-06 (Festividad dia de la constitucion), 2024-12-09 (Festividad inmaculada concepcion).

## Resources

| Resource | Group | Rate |
| --- | --- | --- |
| PM | Equipo de direccion | 28 |
| Programador - 1 | Equipo de desarrollo | 13 |
| Programador - 2 | Equipo de desarrollo | 13 |
| DevOps - 1 | Equipo de desarrollo | 24 |
| DevOps - 2 | Equipo de desarrollo | 24 |
| Analista - 1 | Equipo de direccion | 19 |
| Analista - 2 | Equipo de direccion | 19 |
| Analista - 3 | Equipo de direccion | 19 |
| Analista - 4 | Equipo de direccion | 19 |
| Computador - 1 |  |  |
| Computador - 2 |  |  |
| Computador - 3 |  |  |
| Computador - 4 |  |  |
| Servicio de alojamiento Web |  |  |
| Reserva de Contingencia |  |  |
| Reserva de Gestión |  |  |

## Schedule

| ID | WBS | Task | Type | Duration | Start | Finish | Predecessors | Complete | Remaining | Baseline 1 start | Baseline 1 finish | Total slack | Free slack | Resources | Work | Actual work | Cost | Actual cost |
| --- | --- | --- | --- | --- | --- | --- | --- | --- | --- | --- | --- | --- | --- | --- | --- | --- | --- | --- |
| 1 | 1 | **1. Inicio** |  | 16.5d | 2024-10-02 09:00 A | 2024-10-24 13:00 |  | 99% | 0d | 2024-10-02 09:00 | 2024-10-24 13:00 | 0.5d |  | Reserva de Contingencia [0.1%]; Reserva de Gestión [0.1%] | 12h | 12h | 248.93 | 228 |
| 2 | 1.1 | Inicio del Proyecto | milestone, manual | 0d | 2024-10-02 09:00 | 2024-10-02 09:00 |  |  |  | 2024-10-02 09:00 | 2024-10-02 09:00 |  |  |  |  |  |  |  |
| 3 | 1.2 | **1.1. Carpeta de Inicio** |  | 0.5d | 2024-10-24 09:00 A | 2024-10-24 13:00 |  | 99% | 0d | 2024-10-24 09:00 | 2024-10-24 13:00 | 0.5d |  |  | 12h | 12h | 228 | 228 |
| 4 | 1.2.1 | Elaboración del Acta de Constitución |  | 4h | 2024-10-24 09:00 A | 2024-10-24 13:00 |  | 99% | 0h | 2024-10-24 09:00 | 2024-10-24 13:00 | 0.5d | 0d | Analista - 1; Computador - 1 | 4h | 4h | 76 | 76 |
| 5 | 1.2.2 | Elaboración del Registro de Interesados | manual | 4h | 2024-10-24 09:00 A | 2024-10-24 13:00 |  | 99% | 0h | 2024-10-24 09:00 | 2024-10-24 13:00 |  |  | Analista - 2; Computador - 2 | 4h | 4h | 76 | 76 |
| 6 | 1.2.3 | Elaboración del Registro de Supuestos | manual | 4h | 2024-10-24 09:00 A | 2024-10-24 13:00 |  | 99% | 0h | 2024-10-24 09:00 | 2024-10-24 13:00 |  |  | Analista - 3; Computador - 3 | 4h | 4h | 76 | 76 |
| 7 | 2 | **2. Planificación** |  | 9.75d | 2024-10-24 09:00 A | 2024-11-06 17:00 |  | 99% | 0d | 2024-10-24 09:00 | 2024-11-06 17:00 | 8d | 2.25d | Reserva de Contingencia [0.1%]; Reserva de Gestión [0.1%] | 100h | 100h | 1,991.44 | 1,824 |
| 8 | 2.1 | **2.1. Carpeta Planes** |  | 8d | 2024-10-24 09:00 A | 2024-11-04 19:00 |  | 99% | 0d | 2024-10-24 09:00 | 2024-11-04 19:00 |  |  |  | 48h | 48h | 836 | 836 |
| 9 | 2.1.1 | Realización del Plan de Dirección del Proyecto | manual | 4h | 2024-10-24 15:00 A | 2024-10-24 19:00 | 4, 5, 6 | 99% | 0h | 2024-10-24 15:00 | 2024-10-24 19:00 |  |  | Analista - 1; Computador - 1 | 4h | 4h | 76 | 76 |
| 10 | 2.1.2 | Elaboración del Plan de Gestión de Requisitos |  | 4h | 2024-10-24 09:00 A | 2024-10-24 19:00 | 9 | 99% | 0h | 2024-10-24 09:00 | 2024-10-24 13:00 | 6.5d | 6d | Analista - 1; Computador - 1 | 4h | 4h | 76 | 76 |
| 11 | 2.1.3 | Elaboración del Plan de Gestión del Alcance |  | 4h | 2024-10-24 09:00 A | 2024-10-24 19:00 | 9 | 99% | 0h | 2024-10-24 09:00 | 2024-10-24 13:00 | 1d | 0.5d | Analista - 2; Computador - 2 | 4h | 4h |  |  |
| 12 | 2.1.4 | Elaboración del Plan de Gestión del Cronograma |  | 4h | 2024-10-25 09:00 A | 2024-10-25 13:00 | 9 | 99% | 0h | 2024-10-25 09:00 | 2024-10-25 13:00 | 8.25d | 7.75d | Analista - 2; Computador - 2 | 4h | 4h | 76 | 76 |
| 13 | 2.1.5 | Elaboración del Plan de Gestión de Costes | manual | 4h | 2024-10-25 09:00 A | 2024-10-25 13:00 | 9 | 99% | 0h | 2024-10-25 09:00 | 2024-10-25 13:00 |  |  | Analista - 2; Computador - 2 | 4h | 4h | 76 | 76 |
| 14 | 2.1.6 | Elaboración del Plan de Gestión de Calidad | manual | 4h | 2024-10-25 09:00 A | 2024-10-25 13:00 | 9 | 99% | 0h | 2024-10-25 09:00 | 2024-10-25 13:00 |  |  | Analista - 3; Computador - 3 | 4h | 4h | 76 | 76 |
| 15 | 2.1.7 | Elaboración del Plan de Gestión de Recursos | manual | 4h | 2024-10-25 09:00 A | 2024-10-25 13:00 | 9 | 99% | 0h | 2024-10-25 09:00 | 2024-10-25 13:00 |  |  | Analista - 3; Computador - 3 | 4h | 4h | 76 | 76 |
| 16 | 2.1.8 | Elaboración del Plan de Gestión de Comunicaciones | manual | 4h | 2024-11-04 09:00 A | 2024-11-04 13:00 | 9 | 99% | 0h | 2024-11-04 09:00 | 2024-11-04 13:00 |  |  | Analista - 1; Computador - 1 | 4h | 4h | 76 | 76 |
| 17 | 2.1.9 | Elaboración del Plan de Gestión de Riesgos | manual | 4h | 2024-10-25 09:00 A | 2024-10-25 13:00 | 9 | 99% | 0h | 2024-10-25 09:00 | 2024-10-25 13:00 |  |  | Analista - 4; Computador - 4 | 4h | 4h | 76 | 76 |
| 18 | 2.1.10 | Elaboración del Plan de Gestión de Adquisiciones | manual | 4h | 2024-10-25 09:00 A | 2024-10-25 13:00 | 9 | 99% | 0h | 2024-10-25 09:00 | 2024-10-25 13:00 |  |  | Analista - 4; Computador - 4 | 4h | 4h | 76 | 76 |
| 19 | 2.1.11 | Elaboración del Plan de Gestión de Cambios | manual | 4h | 2024-10-25 09:00 A | 2024-10-25 13:00 | 9 | 99% | 0h | 2024-10-25 09:00 | 2024-10-25 13:00 |  |  | Analista - 1; Computador - 1 | 4h | 4h | 76 | 76 |
| 20 | 2.1.12 | Elaboración del Plan de Gestión de la Configuración | manual | 4h | 2024-11-04 09:00 A | 2024-11-04 13:00 | 9 | 99% | 0h | 2024-11-04 09:00 | 2024-11-04 13:00 |  |  | Analista - 2; Computador - 2 | 4h | 4h | 76 | 76 |
| 21 | 2.2 | **2.2. Carpeta Líneas Base** |  | 8.25d | 2024-10-25 15:00 A | 2024-11-06 17:00 |  | 99% | 0d | 2024-10-25 15:00 | 2024-11-06 17:00 | 8d |  |  | 36h | 36h | 684 | 684 |
| 22 | 2.2.1 | Elaboración del Enunciado del Alcance | manual | 4h | 2024-10-25 15:00 A | 2024-10-25 19:00 | 11 | 99% | 0h | 2024-10-25 15:00 | 2024-10-25 19:00 |  |  | Analista - 1; Computador - 1 | 4h | 4h | 76 | 76 |
| 23 | 2.2.2 | Elaboración de la EDT | manual | 6h | 2024-10-28 09:00 A | 2024-10-28 17:00 | 22 | 99% | 0h | 2024-10-28 09:00 | 2024-10-28 17:00 |  |  | Analista - 2; Computador - 2 | 6h | 6h | 114 | 114 |
| 24 | 2.2.3 | Elaboración del Diccionario de la EDT |  | 10h | 2024-11-05 09:00 A | 2024-11-06 11:00 | 22, 23, 30, 33 | 99% | 0h | 2024-11-05 09:00 | 2024-11-06 11:00 | 0.5d | 0d | Analista - 2; Computador - 2 | 10h | 10h | 190 | 190 |
| 25 | 2.2.4 | Elaboración de la Lista de Hitos | manual | 4h | 2024-10-28 09:00 A | 2024-10-28 13:00 | 22 | 99% | 0h | 2024-10-28 09:00 | 2024-10-28 13:00 |  |  | Analista - 3; Computador - 3 | 4h | 4h | 76 | 76 |
| 26 | 2.2.5 | Entrenamiento para MS Project | manual | 4h | 2024-10-28 09:00 A | 2024-10-28 13:00 |  | 99% | 0h | 2024-10-28 09:00 | 2024-10-28 13:00 |  |  | Analista - 4; Computador - 4 | 4h | 4h | 76 | 76 |
| 27 | 2.2.6 | Elaboración del Cronograma |  | 4h | 2024-11-06 11:00 A | 2024-11-06 17:00 | 12, 23, 24, 30, 33 | 99% | 0h | 2024-11-06 11:00 | 2024-11-06 17:00 | 8d |  | Analista - 4; Computador - 4 | 4h | 4h | 76 | 76 |
| 28 | 2.2.7 | Elaboración del Presupuesto | manual | 4h | 2024-10-30 09:00 A | 2024-10-30 13:00 | 15, 17, 18, 19, 13 | 99% | 0h | 2024-10-30 09:00 | 2024-10-30 13:00 |  |  | Analista - 3; Computador - 3 | 4h | 4h | 76 | 76 |

| ID | WBS | Task | Type | Duration | Start | Finish | Predecessors | Complete | Remaining | Baseline 1 start | Baseline 1 finish | Total slack | Free slack | Constraint | Calendar | Resources | Work | Actual work | Cost | Actual cost |
| --- | --- | --- | --- | --- | --- | --- | --- | --- | --- | --- | --- | --- | --- | --- | --- | --- | --- | --- | --- | --- |
| 29 | 2.3 | **2.3. Carpeta Trazabilidad** |  | 1d | 2024-11-04 09:00 A | 2024-11-04 19:00 |  | 99% | 0d | 2024-11-04 09:00 | 2024-11-04 19:00 | 9.75d |  |  |  |  | 8h | 8h | 152 | 152 |
| 30 | 2.3.1 | Elaboración de la Matriz de Trazabilidad de Requisitos |  | 4h | 2024-11-04 15:00 A | 2024-11-04 19:00 | 17, 33 | 99% | 0h | 2024-11-04 15:00 | 2024-11-04 19:00 | 1.25d | 0d |  |  | Analista - 1; Computador - 1 | 4h | 4h | 76 | 76 |
| 31 | 2.3.2 | Elaboración Matriz de Asignación de Responsabilidades |  | 4h | 2024-11-04 09:00 A | 2024-11-04 13:00 |  | 99% | 0h | 2024-11-04 09:00 | 2024-11-04 13:00 | 10.25d |  | start no earlier than 2024-11-04 09:00 |  | Analista - 2; Computador - 2 | 4h | 4h | 76 | 76 |
| 32 | 2.4 | **2.4. Carpeta Registros** |  | 0.5d | 2024-11-04 09:00 A | 2024-11-04 13:00 |  | 99% | 0d | 2024-11-04 09:00 | 2024-11-04 13:00 |  |  |  |  |  | 8h | 8h | 152 | 152 |
| 33 | 2.4.1 | Elaboración del Registro de Requisitos | manual | 4h | 2024-11-04 09:00 A | 2024-11-04 13:00 | 10 | 99% | 0h | 2024-11-04 09:00 | 2024-11-04 13:00 |  |  |  |  | Analista - 3; Computador - 3 | 4h | 4h | 76 | 76 |
| 34 | 2.4.2 | Elaboración del Registro de Riesgos | manual | 4h | 2024-11-04 09:00 A | 2024-11-04 13:00 | 17 | 99% | 0h | 2024-11-04 09:00 | 2024-11-04 13:00 |  |  |  |  | Analista - 4; Computador - 4 | 4h | 4h | 76 | 76 |
| 35 | 3 | **Entrega Plan de Dirección de Proyecto** |  | 0d | 2024-11-08 19:00 | 2024-11-08 19:00 | 1, 7 |  |  | 2024-11-08 19:00 | 2024-11-08 19:00 | 5.75d | 0d | finish no earlier than 2024-11-08 19:00 | Calendario-Sevilla |  |  |  |  |  |
| 37 | 3.1 | Inicio Iteración 1 | milestone, manual | 0d | 2024-11-11 09:00 | 2024-11-11 09:00 |  |  |  | 2024-11-11 09:00 | 2024-11-11 09:00 |  |  |  |  |  |  |  |  |  |
| 38 | 3.2 | **3.1. Iteración 1** |  | 6d | 2024-11-11 09:00 | 2024-11-18 19:00 |  |  |  | 2024-11-11 09:00 | 2024-11-18 19:00 |  |  |  |  |  | 60h |  | 978 |  |
| 39 | 3.2.1 | **3.1.1. Adquisición de Recursos** |  | 1.75d | 2024-11-11 09:00 | 2024-11-12 17:00 |  |  |  | 2024-11-11 09:00 | 2024-11-12 17:00 | 5d |  |  |  |  | 22h |  | 484 |  |
| 40 | 3.2.1.1 | Preparación del entorno de desarrollo |  | 8h | 2024-11-11 09:00 | 2024-11-11 19:00 | 35 |  |  | 2024-11-11 09:00 | 2024-11-11 19:00 | 5.75d | 0.75d |  |  | DevOps - 1; Computador - 1 | 8h |  | 192 |  |
| 41 | 3.2.1.2 | Preparación de la BBDD |  | 4h | 2024-11-11 09:00 | 2024-11-11 13:00 | 35 |  |  | 2024-11-11 09:00 | 2024-11-11 13:00 | 6.25d | 1.25d |  |  | DevOps - 2; Computador - 2 | 4h |  | 96 |  |
| 42 | 3.2.1.3 | Entrenamiento con Django |  | 6h | 2024-11-12 09:00 | 2024-11-12 17:00 |  |  |  | 2024-11-12 09:00 | 2024-11-12 17:00 | 5d | 0d | start no earlier than 2024-11-12 09:00 |  | DevOps - 1; Computador - 1 | 6h |  | 144 |  |
| 43 | 3.2.1.4 | Configuración PaaS y CI/CD |  | 4h | 2024-11-11 09:00 | 2024-11-11 13:00 | 35 |  |  | 2024-11-11 09:00 | 2024-11-11 13:00 | 6.25d | 1.25d |  |  | Programador - 1; Computador - 3 | 4h |  | 52 |  |
| 44 | 3.2.2 | **3.1.2. Gestión de Usuarios** |  | 2.75d | 2024-11-12 17:00 | 2024-11-15 13:00 |  |  |  | 2024-11-12 17:00 | 2024-11-15 13:00 | 2.25d |  |  |  |  | 38h |  | 494 |  |
| 45 | 3.2.2.1 | Registro de usuario (R5, R19) |  | 16h | 2024-11-12 17:00 | 2024-11-14 17:00 | 40, 41, 42, 43 |  |  | 2024-11-12 17:00 | 2024-11-14 17:00 | 5d |  |  |  | Programador - 1; Computador - 3 | 16h |  | 208 |  |
| 46 | 3.2.2.2 | Inicio de sesión (R7) |  | 8h | 2024-11-12 17:00 | 2024-11-13 17:00 | 40, 41, 42, 43 |  |  | 2024-11-12 17:00 | 2024-11-13 17:00 | 6d |  |  |  | Programador - 2; Computador - 4 | 8h |  | 104 |  |
| 47 | 3.2.2.3 | Edición de usuario (R6, R19) |  | 10h | 2024-11-14 09:00 | 2024-11-15 11:00 | 40, 41, 42, 43 |  |  | 2024-11-14 09:00 | 2024-11-15 11:00 | 4.5d |  | start no earlier than 2024-11-14 09:00 |  | Programador - 2; Computador - 4 | 10h |  | 130 |  |
| 48 | 3.2.2.4 | Vista de los datos de la academia (R29) |  | 4h | 2024-11-15 09:00 | 2024-11-15 13:00 | 40, 41, 42, 43 |  |  | 2024-11-15 09:00 | 2024-11-15 13:00 | 4.25d |  | start no earlier than 2024-11-15 09:00 |  | Programador - 1; Computador - 3 | 4h |  | 52 |  |
| 49 | 3.2.2.5 | Inicio Iteración 2 | milestone, manual | 0d | 2024-11-15 09:00 | 2024-11-15 09:00 |  |  |  | 2024-11-15 09:00 | 2024-11-15 09:00 |  |  |  |  |  |  |  |  |  |
| 50 | 3.3 | **3.2. Iteración 2** |  | 5d | 2024-11-19 09:00 | 2024-11-25 19:00 | 38 |  |  | 2024-11-19 09:00 | 2024-11-25 19:00 | 2.75d | 0d |  |  |  | 114h |  | 2,208 |  |
| 51 | 3.3.1 | **3.2.1. Gestión de Cursos** |  | 2.75d | 2024-11-19 09:00 | 2024-11-21 17:00 | 38 |  |  | 2024-11-19 09:00 | 2024-11-21 17:00 | 4.75d | 0d |  |  |  | 58h |  | 1,128 |  |
| 52 | 3.3.1.1 | Registrar nuevo curso(R20) |  | 16h | 2024-11-19 09:00 | 2024-11-20 19:00 | 38 |  |  | 2024-11-19 09:00 | 2024-11-20 19:00 | 5.5d |  |  |  | DevOps - 1; Computador - 1 | 16h |  | 384 |  |
| 53 | 3.3.1.2 | Modificación del curso(R28) |  | 12h | 2024-11-19 09:00 | 2024-11-20 13:00 | 38 |  |  | 2024-11-19 09:00 | 2024-11-20 13:00 | 6d |  |  |  | DevOps - 2; Computador - 2 | 12h |  | 288 |  |
| 54 | 3.3.1.3 | Listado de cursos ofertados (R1, R10, R11, R26) |  | 12h | 2024-11-19 09:00 | 2024-11-20 13:00 | 38 |  |  | 2024-11-19 09:00 | 2024-11-20 13:00 | 6d |  |  |  | Programador - 1; Computador - 3 | 12h |  | 156 |  |
| 55 | 3.3.1.4 | Ver detalles de un curso (R13, R27, R38) |  | 12h | 2024-11-19 09:00 | 2024-11-20 13:00 | 38 |  |  | 2024-11-19 09:00 | 2024-11-20 13:00 | 6d |  |  |  | Programador - 2; Computador - 4 | 12h |  | 156 |  |
| 56 | 3.3.1.5 | Listado de cursos reservados (R25) |  | 6h | 2024-11-21 09:00 | 2024-11-21 17:00 |  |  |  | 2024-11-21 09:00 | 2024-11-21 17:00 | 4.75d |  | start no earlier than 2024-11-21 09:00 |  | DevOps - 1; Computador - 1 | 6h |  | 144 |  |

| ID | WBS | Task | Type | Duration | Start | Finish | Predecessors | Baseline 1 start | Baseline 1 finish | Total slack | Constraint | Resources | Work | Cost |
| --- | --- | --- | --- | --- | --- | --- | --- | --- | --- | --- | --- | --- | --- | --- |
| 57 | 3.3.2 | **3.2.2. Gestión de Reservas** |  | 2.25d | 2024-11-21 17:00 | 2024-11-25 19:00 |  | 2024-11-21 17:00 | 2024-11-25 19:00 | 0d |  |  | 56h | 1,080 |
| 58 | 3.3.2.1 | Reserva de un curso (R14) |  | 16h | 2024-11-21 17:00 | 2024-11-25 17:00 | 51 | 2024-11-21 17:00 | 2024-11-25 17:00 | 4.75d |  | DevOps - 1; Computador - 1 | 16h | 384 |
| 59 | 3.3.2.2 | Implementación de pago (R15, R31, R34, R35) |  | 16h | 2024-11-21 17:00 | 2024-11-25 17:00 | 51 | 2024-11-21 17:00 | 2024-11-25 17:00 | 4.75d |  | DevOps - 2; Computador - 2 | 16h | 384 |
| 60 | 3.3.2.3 | Lista de clientes del curso (R39) |  | 8h | 2024-11-21 17:00 | 2024-11-22 17:00 | 51 | 2024-11-21 17:00 | 2024-11-22 17:00 | 5.75d |  | Programador - 1; Computador - 3 | 8h | 104 |
| 61 | 3.3.2.4 | Implementación de la lista de cursos reservados por el cliente (R30) |  | 8h | 2024-11-21 17:00 | 2024-11-22 17:00 | 51 | 2024-11-21 17:00 | 2024-11-22 17:00 | 5.75d |  | Programador - 2; Computador - 4 | 8h | 104 |
| 62 | 3.3.2.5 | Implementación del carrito de compra para cursos (R33) |  | 8h | 2024-11-25 09:00 | 2024-11-25 19:00 |  | 2024-11-25 09:00 | 2024-11-25 19:00 | 4.5d | start no earlier than 2024-11-25 09:00 | Programador - 1; Computador - 3 | 8h | 104 |
| 63 | 3.3.2.6 | Inicio Iteración 3 | milestone, manual | 0d | 2024-11-21 17:00 | 2024-11-21 17:00 |  | 2024-11-21 17:00 | 2024-11-21 17:00 |  |  |  |  |  |
| 64 | 3.4 | **3.3. Iteración 3** |  | 6d | 2024-11-25 09:00 | 2024-12-01 19:00 | 50 | 2024-11-25 09:00 | 2024-12-01 19:00 |  |  |  | 48h | 888 |
| 65 | 3.4.1 | **3.3.1. Desasrrollo de Pruebas** |  | 1d | 2024-11-26 09:00 | 2024-11-26 19:00 |  | 2024-11-26 09:00 | 2024-11-26 19:00 | 4.5d |  |  | 24h | 488 |
| 66 | 3.4.1.1 | Pruebas de usuario |  | 8h | 2024-11-26 09:00 | 2024-11-26 19:00 |  | 2024-11-26 09:00 | 2024-11-26 19:00 | 4.5d | start no earlier than 2024-11-26 09:00 | DevOps - 1; Computador - 1; Servicio de alojamiento Web | 8h | 192 |
| 67 | 3.4.1.2 | Pruebas de curso |  | 8h | 2024-11-26 09:00 | 2024-11-26 19:00 |  | 2024-11-26 09:00 | 2024-11-26 19:00 | 4.5d | start no earlier than 2024-11-26 09:00 | DevOps - 2; Computador - 2; Servicio de alojamiento Web | 8h | 192 |
| 68 | 3.4.1.3 | Pruebas de reserva |  | 8h | 2024-11-26 09:00 | 2024-11-26 19:00 | 57 | 2024-11-26 09:00 | 2024-11-26 19:00 | 4.5d |  | Programador - 2; Computador - 4; Servicio de alojamiento Web | 8h | 104 |
| 69 | 3.4.2 | **3.3.2. Gestión de Notificaciones** |  | 2d | 2024-11-26 09:00 | 2024-11-27 19:00 |  | 2024-11-26 09:00 | 2024-11-27 19:00 | 3.5d |  |  | 24h | 400 |
| 70 | 3.4.2.1 | Notificación del curso adquirido (R16) |  | 8h | 2024-11-26 09:00 | 2024-11-26 19:00 | 50 | 2024-11-26 09:00 | 2024-11-26 19:00 | 4.5d |  | Programador - 1; Computador - 3; Servicio de alojamiento Web | 8h | 104 |
| 71 | 3.4.2.2 | Notificación de revocación del acceso al curso (R36) |  | 8h | 2024-11-27 09:00 | 2024-11-27 19:00 |  | 2024-11-27 09:00 | 2024-11-27 19:00 | 3.5d | start no earlier than 2024-11-27 09:00 | Programador - 2; Computador - 4; Servicio de alojamiento Web | 8h | 104 |
| 72 | 3.4.2.3 | Notificación de revocación del acceso al sitio web (R37) |  | 8h | 2024-11-27 09:00 | 2024-11-27 19:00 |  | 2024-11-27 09:00 | 2024-11-27 19:00 | 3.5d | start no earlier than 2024-11-27 09:00 | DevOps - 2; Computador - 2; Servicio de alojamiento Web | 8h | 192 |
| 73 | 3.5 | **3.4. Carpeta Ejecución** |  | 0.5d | 2024-12-02 09:00 | 2024-12-02 13:00 |  | 2024-12-02 09:00 | 2024-12-02 13:00 | 1.5d |  |  | 16h | 304 |
| 74 | 3.5.1 | Elaboración de registro de cambios |  | 4h | 2024-12-02 09:00 | 2024-12-02 13:00 | 35, 64 | 2024-12-02 09:00 | 2024-12-02 13:00 | 1.5d | finish no earlier than 2024-12-01 19:00 | Analista - 1; Computador - 1 | 4h | 76 |
| 75 | 3.5.2 | Elaboración de registro de incidencias |  | 4h | 2024-12-02 09:00 | 2024-12-02 13:00 | 35, 64 | 2024-12-02 09:00 | 2024-12-02 13:00 | 1.5d | finish no earlier than 2024-12-01 19:00 | Analista - 2; Computador - 2 | 4h | 76 |
| 76 | 3.5.3 | Elaboración de registro de decisiones |  | 4h | 2024-12-02 09:00 | 2024-12-02 13:00 | 35, 64 | 2024-12-02 09:00 | 2024-12-02 13:00 | 1.5d | finish no earlier than 2024-12-01 19:00 | Analista - 3; Computador - 3 | 4h | 76 |
| 77 | 3.5.4 | Elaboración de documentación de los sprints |  | 4h | 2024-12-02 09:00 | 2024-12-02 13:00 | 35, 64 | 2024-12-02 09:00 | 2024-12-02 13:00 | 1.5d | finish no earlier than 2024-12-01 19:00 | Analista - 4; Computador - 4 | 4h | 76 |
| 78 | 4 | **4. Seguimiento y Control** |  | 3.5d | 2024-12-02 15:00 | 2024-12-05 19:00 |  | 2024-12-02 15:00 | 2024-12-05 19:00 | 1.5d |  | Reserva de Contingencia [0.1%]; Reserva de Gestión [0.1%] | 128h | 2,829.94 |
| 79 | 4.1 | **4.1. Monitoreo del Progreso del Proyecto** |  | 2.5d | 2024-12-02 15:00 | 2024-12-04 19:00 |  | 2024-12-02 15:00 | 2024-12-04 19:00 | 2d |  |  | 80h | 1,520 |
| 80 | 4.1.1 | Recolección de datos |  | 20h | 2024-12-02 15:00 | 2024-12-04 19:00 |  | 2024-12-02 15:00 | 2024-12-04 19:00 | 2d |  | Analista - 1; Computador - 1 | 20h | 380 |
| 81 | 4.1.2 | Elaboración de informes de desempeño |  | 20h | 2024-12-02 15:00 | 2024-12-04 19:00 |  | 2024-12-02 15:00 | 2024-12-04 19:00 | 2d |  | Analista - 2; Computador - 2 | 20h | 380 |
| 82 | 4.1.3 | Análisis de desviaciones |  | 20h | 2024-12-02 15:00 | 2024-12-04 19:00 |  | 2024-12-02 15:00 | 2024-12-04 19:00 | 2d |  | Analista - 3; Computador - 3 | 20h | 380 |
| 83 | 4.1.4 | Elaboración de informes de seguimiento |  | 20h | 2024-12-02 15:00 | 2024-12-04 19:00 |  | 2024-12-02 15:00 | 2024-12-04 19:00 | 2d |  | Analista - 4; Computador - 4 | 20h | 380 |

| ID | WBS | Task | Type | Duration | Start | Finish | Predecessors | Baseline 1 start | Baseline 1 finish | Total slack | Free slack | Constraint | Resources | Work | Cost |
| --- | --- | --- | --- | --- | --- | --- | --- | --- | --- | --- | --- | --- | --- | --- | --- |
| 84 | 4.2 | **4.2. Control de Cambios y Gestión de la Calidad** |  | 2.5d | 2024-12-02 15:00 | 2024-12-04 19:00 |  | 2024-12-02 15:00 | 2024-12-04 19:00 | 1.5d |  |  |  | 32h | 768 |
| 85 | 4.2.1 | Actualización del plan de dirección |  | 8h | 2024-12-02 15:00 | 2024-12-03 13:00 |  | 2024-12-02 15:00 | 2024-12-03 13:00 | 5.5d |  |  | DevOps - 1; Computador - 1 | 8h | 192 |
| 86 | 4.2.2 | Actualización de la documentación del proyecto |  | 8h | 2024-12-02 15:00 | 2024-12-03 13:00 |  | 2024-12-02 15:00 | 2024-12-03 13:00 | 5.5d |  |  | DevOps - 2; Computador - 2 | 8h | 192 |
| 87 | 4.2.3 | Verificación de entregables | manual | 8h | 2024-12-04 09:00 | 2024-12-04 19:00 |  | 2024-12-04 09:00 | 2024-12-04 19:00 |  |  |  | DevOps - 1; Computador - 1 | 8h | 192 |
| 88 | 4.2.4 | Implementación de cambios | manual | 8h | 2024-12-04 09:00 | 2024-12-04 19:00 |  | 2024-12-04 09:00 | 2024-12-04 19:00 |  |  |  | DevOps - 2; Computador - 2 | 8h | 192 |
| 89 | 4.3 | **4.3. Reportes de Estado y Gestión de Riesgos** |  | 1d | 2024-12-05 09:00 | 2024-12-05 19:00 |  | 2024-12-05 09:00 | 2024-12-05 19:00 | 0d |  |  |  | 16h | 304 |
| 90 | 4.3.1 | Monitorización de los riesgos identificados | manual | 8h | 2024-12-05 09:00 | 2024-12-05 19:00 |  | 2024-12-05 09:00 | 2024-12-05 19:00 |  |  |  | Analista - 1; Computador - 1 | 8h | 152 |
| 91 | 4.3.2 | Elaboración de informes de estado | manual | 8h | 2024-12-05 09:00 | 2024-12-05 19:00 |  | 2024-12-05 09:00 | 2024-12-05 19:00 |  |  |  | Analista - 2; Computador - 2 | 8h | 152 |
| 92 | 4.3.3 | Aplicación completamente testeada | milestone, manual | 0d | 2024-12-05 09:00 | 2024-12-05 09:00 |  | 2024-12-05 09:00 | 2024-12-05 09:00 |  |  |  |  |  |  |
| 93 | 4.3.4 | Validación de la calidad | milestone, manual | 0d | 2024-12-05 09:00 | 2024-12-05 09:00 |  | 2024-12-05 09:00 | 2024-12-05 09:00 |  |  |  |  |  |  |
| 94 | 5 | **5. Cierre** |  | 2d | 2024-12-10 09:00 | 2024-12-12 09:00 | 78 | 2024-12-10 09:00 | 2024-12-12 09:00 | 0d |  |  | Reserva de Contingencia [0.1%]; Reserva de Gestión [0.1%] | 16h | 410.51 |
| 95 | 5.1 | **5.1. Entrega del Proyecto** |  | 1d | 2024-12-10 09:00 | 2024-12-10 19:00 |  |  |  | 1d |  |  |  | 12h | 264 |
| 96 | 5.1.1 | Presentación del Proyecto |  | 4h | 2024-12-10 09:00 | 2024-12-10 13:00 | 78 | 2024-12-10 09:00 | 2024-12-10 13:00 | 1.5d |  |  | PM; Computador - 1 | 4h | 112 |
| 97 | 5.1.2 | Elaboración del Manual de Instrucciones |  | 8h | 2024-12-10 09:00 | 2024-12-10 19:00 | 78 | 2024-12-10 09:00 | 2024-12-10 19:00 | 1d | 0d |  | Analista - 3; Computador - 3 | 8h | 152 |
| 98 | 5.2 | **5.2. Cierre del Proyecto** |  | 0.5d | 2024-12-10 09:00 | 2024-12-10 13:00 |  |  |  | 1.5d |  |  |  | 4h | 112 |
| 99 | 5.2.1 | Elaboración de Informe de Cierre |  | 4h | 2024-12-10 09:00 | 2024-12-10 13:00 | 78 | 2024-12-10 09:00 | 2024-12-10 13:00 | 1.5d | 0.5d | start no earlier than 2024-12-10 09:00 | PM; Computador - 1 | 4h | 112 |
| 100 | 5.3 | Entrega del Proyecto | milestone | 0d | 2024-12-10 19:00 | 2024-12-10 19:00 | 97, 99 | 2024-12-10 19:00 | 2024-12-10 19:00 | 1d |  |  |  |  |  |
| 101 | 5.4 | Presentación | milestone, manual | 0d | 2024-12-12 09:00 | 2024-12-12 09:00 | 96, 97, 99 | 2024-12-12 09:00 | 2024-12-12 09:00 |  |  |  |  |  |  |
